Task ID,Section,Description,Owner,Dependencies,Pre-requisites,Definition of Done,Status,KPIs,Target Sprint,Artifacts To Track,Validation Method,Estimate (O/M/P),Planned Start,Planned Finish,Percent Complete,Dependency Types,Cadence
IFC-201,Settings,"Settings Control Plane Foundations - domain models, adapters, and router for users/teams/roles/permissions/audit/integrations/webhooks/security",pg-208,"IFC-072,IFC-098,IFC-099,IFC-106,IFC-124",FILE:docs/architecture/adr/ADR-009-zero-trust-security.md;FILE:docs/architecture/adr/ADR-008-audit-logging.md;FILE:docs/planning/prd-core-crm.md;ENV:Tenant RBAC policy baseline approved,"Settings domain policies and APIs implemented for IAM, audit, integrations and security controls; artifacts: settings.router.ts, settings-policy.ts, PrismaSettingsRepository.ts; verified by: pnpm test",Backlog,"100% role/permission checks covered by tests, 0 unauthorized settings mutations in integration tests, p95 settings API latency <250ms",46,ARTIFACT:packages/domain/src/settings/SettingsPolicy.ts;ARTIFACT:packages/adapters/src/repositories/PrismaSettingsRepository.ts;ARTIFACT:apps/api/src/modules/settings/settings.router.ts;ARTIFACT:apps/api/src/modules/settings/__tests__/settings.router.test.ts;EVIDENCE:.specify/sprints/sprint-25/attestations/IFC-201/context_ack.json;ARTIFACT:docs/planning/prd-settings-control-plane.md,VALIDATE:pnpm test;GATE:coverage-gte-90;AUDIT:security-review,240/480/720,2027-09-19,2027-10-02,0,"IFC-072:FS,IFC-098:FS,IFC-099:FS,IFC-106:FS,IFC-124:FS",
IFC-202,Core CRM,Activity Feed Stats Endpoint - getStats aggregation with counts by type source and entity over time windows,Backend Dev (STOA-Domain),IFC-069,FILE:apps/api/src/modules/misc/activity-feed.router.ts;FILE:packages/application/src/services/ActivityFeedService.ts;FILE:packages/application/src/ports/repositories/ActivityFeedRepositoryPort.ts,"activityFeed.getStats endpoint returning aggregate counts by type, source, entity type, and configurable time windows (24h, 7d, 30d); repository port extended with getStats method; Prisma adapter implements COUNT queries; unit and router tests; verified by: pnpm test",Completed,Response <200ms; test coverage >=90%; counts accurate vs raw feed data,16,ARTIFACT:apps/api/src/modules/misc/__tests__/activity-feed-stats.router.test.ts;EVIDENCE:.specify/sprints/sprint-16/attestations/IFC-202/attestation.json;EVIDENCE:.specify/sprints/sprint-16/attestations/IFC-202/attestation.json,VALIDATE:pnpm test;GATE:coverage-gte-90,60/120/240,2026-03-10,2026-03-10,100,IFC-069:FS,SPEC:.specify/sprints/sprint-16/specifications/IFC-202-spec.md;PLAN:.specify/sprints/sprint-16/planning/IFC-202-plan.md
IFC-203,Core CRM,Activity Feed Full-Text Search - search endpoint with text query across titles descriptions and actor names,Backend Dev (STOA-Domain),"IFC-069,IFC-155",FILE:apps/api/src/modules/misc/activity-feed.router.ts;FILE:packages/application/src/services/ActivityFeedService.ts;FILE:packages/adapters/src/repositories/PrismaActivityFeedRepository.ts,"activityFeed.search endpoint accepting text query with cursor pagination; repository uses Prisma full-text search (or ILIKE fallback) across activity titles, descriptions, and actor names; tenant-scoped; results ranked by relevance then timestamp; unit and router tests; verified by: pnpm test",Completed,Search response <500ms; test coverage >=90%; relevance ranking correct; tenant isolation enforced,16,ARTIFACT:apps/api/src/modules/misc/__tests__/activity-feed-search.router.test.ts;EVIDENCE:.specify/sprints/sprint-16/attestations/IFC-203/attestation.json,VALIDATE:pnpm test;GATE:coverage-gte-90,90/180/360,2026-03-10,2026-03-10,100,"IFC-069:FS,IFC-155:FS",SPEC:.specify/sprints/sprint-16/specifications/IFC-203-spec.md;PLAN:.specify/sprints/sprint-16/planning/IFC-203-plan.md
IFC-204,Core CRM,Activity Feed Performance Observability - queryDurationMs tracking structured logging and latency alerting,pg-208,IFC-069,FILE:apps/api/src/modules/misc/activity-feed.router.ts;FILE:packages/adapters/src/repositories/PrismaActivityFeedRepository.ts;FILE:infra/monitoring/,"queryDurationMs field added to feed response; repository measures query execution time via performance.now(); structured JSON logging for all feed queries (tenant, duration, source count, cache hit/miss); alert threshold at p95 >500ms; Grafana dashboard panel; unit tests for timing; verified by: pnpm test",Backlog,p95 overhead of timing <5ms; structured logs parseable by log aggregator; test coverage >=90%,26,ARTIFACT:apps/api/src/modules/misc/__tests__/activity-feed-perf.test.ts;EVIDENCE:.specify/sprints/sprint-16/attestations/IFC-204/attestation.json,VALIDATE:pnpm test;GATE:coverage-gte-90,60/120/240,2026-12-13,2026-12-26,0,IFC-069:FS,
IFC-205,Core CRM,Ticket Full-Text Search - add search parameter to ticketQuerySchema and TicketService for subject ticketNumber contactName searching,Backend Dev (STOA-Domain),IFC-189,FILE:packages/validators/src/ticket.ts;FILE:apps/api/src/services/TicketService.ts;FILE:apps/api/src/modules/ticket/ticket.router.ts,search param added to ticketQuerySchema; TicketService filters by subject ticketNumber contactName using ILIKE; search response <500ms; test coverage >=90%; verified by: pnpm test,Completed,Search response <500ms; results match subject/ticketNumber/contactName; test coverage >=90%,6,ARTIFACT:packages/validators/src/ticket.ts;ARTIFACT:apps/api/src/services/TicketService.ts;ARTIFACT:apps/api/src/modules/ticket/__tests__/ticket-search.test.ts;EVIDENCE:.specify/sprints/sprint-6/attestations/IFC-205/attestation.json,VALIDATE:pnpm test;GATE:coverage-gte-90,60/120/240,2026-02-13,2026-02-15,100,IFC-189:FS,
IFC-206,Core CRM,Ticket Stats Enhancement - add SLA status breakdown time window filtering and sortBy sortOrder to ticket query schema,Backend Dev (STOA-Domain),IFC-189,FILE:packages/validators/src/ticket.ts;FILE:apps/api/src/modules/ticket/ticket.router.ts;FILE:apps/api/src/services/TicketService.ts,ticket.stats returns SLA status breakdown counts; ticketQuerySchema supports sortBy and sortOrder params; time window filtering for stats (24h 7d 30d); test coverage >=90%; verified by: pnpm test,Completed,Stats response <200ms; SLA breakdown counts accurate; sort params functional; test coverage >=90%,6,ARTIFACT:apps/api/src/modules/ticket/ticket.router.ts;ARTIFACT:apps/api/src/modules/ticket/__tests__/ticket-stats.test.ts;EVIDENCE:.specify/sprints/sprint-6/attestations/IFC-206/attestation.json,VALIDATE:pnpm test;GATE:coverage-gte-90,60/120/240,2026-02-13,2026-02-15,100,IFC-189:FS,
IFC-207,Core CRM,Ticket Query Performance Tracking - add queryDurationMs to ticket list and stats endpoints using performance.now pattern from timeline router,Backend Dev (STOA-Quality),IFC-189,FILE:apps/api/src/modules/ticket/ticket.router.ts,queryDurationMs field added to ticket list and stats responses; measured via performance.now() wrapping Prisma queries; p95 overhead <5ms; unit tests verify timing field present; verified by: pnpm test,Completed,p95 overhead <5ms; queryDurationMs present in responses; test coverage >=90%,6,ARTIFACT:apps/api/src/modules/ticket/ticket.router.ts;ARTIFACT:apps/api/src/modules/ticket/__tests__/ticket-perf.test.ts;EVIDENCE:.specify/sprints/sprint-6/attestations/IFC-207/attestation.json,VALIDATE:pnpm test;GATE:coverage-gte-90,30/60/120,2026-02-14,2026-02-15,100,IFC-189:FS,
PG-154,Core CRM,Fix View Schedule 404 - Welcome Banner links to /calendar which does not exist,CRM FE (STOA-Foundation),PG-129,FILE:apps/web/src/components/home/AuthenticatedHomePage.tsx,View Schedule button navigates to a valid route; no 404; verified by: navigation test,Completed,Zero 404 errors from home page links,14,ARTIFACT:apps/web/src/app/calendar/(list)/__tests__/page.test.tsx;ARTIFACT:apps/web/src/__tests__/root-proxy.test.ts;EVIDENCE:.specify/sprints/sprint-14/attestations/PG-154/attestation.json,VALIDATE:pnpm --filter @intelliflow/web test --run,15/30/60,2026-02-22,2026-02-23,100,PG-129:FS,
PG-155,Core CRM,Fix 6 broken Quick Action hrefs - /calls/new /emails/compose /calendar/new /tasks/new /deals/new /documents/upload all return 404,CRM FE (STOA-Foundation),PG-129,FILE:apps/web/src/components/home/PinnedItemsSheet.tsx,All 8 Quick Actions navigate to valid routes or show coming-soon modal; route audit confirms zero 404s,Completed,"Zero 404 errors from Quick Actions, all 8 actions functional",14,ARTIFACT:apps/web/src/components/home/PinnedItemsSheet.tsx;ARTIFACT:apps/web/src/components/home/AuthenticatedHomePage.tsx,VALIDATE:pnpm --filter @intelliflow/web test --run,30/60/120,2026-02-19,2026-02-19,100,PG-129:FS,
PG-156,Core CRM,Customizable Daily Goals - settings UI + home.updateDailyGoal mutation + read from User.preferences instead of hardcoded targetValue=5000,CRM FE+BE (STOA-Foundation),PG-129,FILE:apps/api/src/modules/home/home.router.ts;FILE:apps/web/src/components/home/AuthenticatedHomePage.tsx,Users can set daily goal type (revenue/calls/meetings/tasks) and target; goal persists in User.preferences; getDailyGoal reads from preferences; tests cover CRUD,Completed,"Goal settings persist across sessions, 4 goal types configurable",15,ARTIFACT:apps/web/src/components/home/GoalSettingsModal.tsx;ARTIFACT:apps/api/src/modules/home/home.router.ts;EVIDENCE:.specify/sprints/sprint-15/attestations/PG-156/attestation.json;EVIDENCE:.specify/sprints/sprint-15/attestations/PG-156/attestation.json,VALIDATE:pnpm --filter @intelliflow/web typecheck;VALIDATE:pnpm --filter @intelliflow/web test --run,60/120/240,2026-02-28,2026-02-28,100,PG-129:FS,
PG-157,Core CRM,Visible Pin to Home buttons on entity list items and detail page headers - not just hidden in 3-dot MoreActionsButton sheet,CRM FE (STOA-Foundation),PG-129,FILE:apps/web/src/components/shared/entity-action-sheet.tsx;FILE:apps/web/src/hooks/use-entity-pin.ts,Pin/Unpin icon button visible on entity detail headers; uses useEntityPin hook; aria-label for a11y; tests cover pin toggle,Completed,"Pin button visible without opening 3-dot menu, WCAG AA compliant",15,ARTIFACT:apps/web/src/components/home/PinButton.tsx,VALIDATE:pnpm --filter @intelliflow/web typecheck;VALIDATE:pnpm --filter @intelliflow/web test --run,30/60/120,2026-02-28,2026-02-28,100,PG-129:FS,
PG-158,Core CRM,Drag and drop pinned items reorder - backend API exists (home.reorderPinnedItems) needs @dnd-kit frontend integration,CRM FE (STOA-Foundation),PG-129,FILE:apps/web/src/components/home/PinnedItemsSheet.tsx;FILE:apps/api/src/modules/home/home.router.ts,@dnd-kit installed; PinnedSection supports drag-and-drop reorder; calls home.reorderPinnedItems on drop; touch support; tests cover reorder,Completed,"Drag-drop reorder works on desktop and mobile, order persists via API",15,ARTIFACT:apps/web/src/components/home/PinnedItemsSheet.tsx;ARTIFACT:apps/web/src/components/home/DraggablePinnedItem.tsx,VALIDATE:pnpm --filter @intelliflow/web typecheck;VALIDATE:pnpm --filter @intelliflow/web test --run,60/120/180,2026-02-28,2026-02-28,100,PG-129:FS,
PG-159,Core CRM,Stale pin handling - deleted or inaccessible pinned entities should show Item unavailable with unpin option,CRM FE+BE (STOA-Foundation),PG-129,FILE:apps/api/src/modules/home/home.router.ts;FILE:apps/web/src/components/home/AuthenticatedHomePage.tsx,getPinnedItems checks entity existence; missing entities return stub with unavailable flag; UI shows badge with unpin button; ADR-027 requirement verified,Completed,"Stale pins show fallback within 200ms, unpin works on stale items",15,ARTIFACT:apps/api/src/modules/home/home.router.ts;ARTIFACT:apps/web/src/components/home/AuthenticatedHomePage.tsx,VALIDATE:pnpm --filter @intelliflow/web test --run;VALIDATE:pnpm --filter @intelliflow/api test --run,30/60/120,2026-02-28,2026-03-01,100,PG-129:FS,
PG-160,Core CRM,View All AI Insights page - /insights route with getAllInsights endpoint pagination and filtering by insight type,CRM FE+BE (STOA-Foundation),PG-129,FILE:apps/api/src/modules/home/home.router.ts,/insights page with paginated list; getAllInsights endpoint with type filter; View All link navigates correctly; loading/empty states,Completed,"Page loads <500ms, supports 4 insight type filters, cursor pagination",15,ARTIFACT:apps/web/src/app/insights/page.tsx;ARTIFACT:apps/web/src/components/insights/InsightsListPage.tsx,VALIDATE:pnpm --filter @intelliflow/web typecheck;VALIDATE:pnpm --filter @intelliflow/web test --run,60/120/180,2026-02-28,2026-03-01,100,PG-129:FS,
PG-161,Core CRM,Notifications integration on home page - bell icon header badge count IFC-183 Prisma model and notification router,CRM FE+BE (STOA-Foundation),"PG-129,IFC-183",FILE:apps/web/src/components/home/AuthenticatedHomePage.tsx,Bell icon in home header; unread count badge; dropdown with recent notifications; mark-as-read; Notification model + router; tests cover bell and badge,Completed,"Badge updates in real-time, mark-read latency <200ms",16,ARTIFACT:apps/web/src/components/notifications/NotificationBell.tsx;ARTIFACT:apps/api/src/modules/notifications/notifications.router.ts;ARTIFACT:apps/web/src/components/home/NotificationsSummaryWidget.tsx,VALIDATE:pnpm --filter @intelliflow/web typecheck;VALIDATE:pnpm --filter @intelliflow/web test --run,120/240/360,2026-03-10,2026-03-11,100,"PG-129:FS,IFC-183:FS",SPEC:.specify/sprints/sprint-16/specifications/PG-161-spec.md;PLAN:.specify/sprints/sprint-16/planning/PG-161-plan.md;EVIDENCE:.specify/sprints/sprint-16/attestations/PG-161/attestation.json
PG-162,Core CRM,AI Insights from ML model - LangChain chain for generating daily insights with caching confidence scores and action recommendations Cross-entity scope: null-state UX - when AI insight is null on entity detail pages show Run AI Analysis button. Lead detail already done (2026-03-04) apply same pattern to Contact detail. Ensure fallback values visually distinct from real AI data.,AI Specialist (STOA-Intelligence),"PG-129,IFC-095",FILE:apps/ai-worker/src/chains/insight-generation.chain.ts;FILE:apps/api/src/modules/home/home.router.ts,LangChain chain generates daily insights per user; cached 1h TTL; confidence scores; 4 insight types; home.getAIInsights reads from cache; tests with mocked LLM; Null-state indicator on Contact detail; fallback data visually distinguished from real AI output,Completed,"Insight generation <3s, cache hit rate >80%, 4 insight types",16,ARTIFACT:apps/api/src/modules/home/home.router.ts;ARTIFACT:apps/web/src/components/insights/InsightCard.tsx;ARTIFACT:apps/web/src/app/contacts/[id]/page.tsx;ARTIFACT:packages/validators/src/home.ts;ARTIFACT:apps/web/src/app/contacts/[id]/__tests__/page.test.tsx,VALIDATE:pnpm --filter @intelliflow/validators exec vitest run src/__tests__/home.test.ts;VALIDATE:pnpm --filter @intelliflow/api exec vitest run src/modules/home/__tests__/home.router.test.ts;VALIDATE:pnpm --filter @intelliflow/web exec vitest run src/components/home/__tests__/AuthenticatedHomePage.test.tsx src/app/insights/__tests__/page.test.tsx src/app/contacts/[id]/__tests__/page.test.tsx,120/240/480,2026-03-10,2026-03-10,100,"PG-129:FS,IFC-095:FS",
PG-163,Core CRM,Home page integration tests - test home.router endpoints against real database with seed data,QA (STOA-Quality),PG-129,FILE:apps/api/src/modules/home/home.router.ts;FILE:apps/api/src/modules/home/__tests__/home.router.coverage.test.ts,"Integration tests for all 9 home router endpoints; mock-based with full middleware chain; covers auth, pagination, error cases; >90% coverage on home.router.ts",Completed,"Coverage >90% on home router, all 9 endpoints tested, <30s suite",15,ARTIFACT:apps/api/src/modules/home/__tests__/home.router.coverage.test.ts;SPEC:.specify/sprints/sprint-15/specifications/PG-163-spec.md;PLAN:.specify/sprints/sprint-15/planning/PG-163-plan.md,VALIDATE:pnpm --filter @intelliflow/api test --run,60/120/240,2026-03-01,2026-03-01,100,PG-129:FS,
PG-164,Core CRM,Home page E2E tests - 5 Playwright scenarios: public page auth redirect insight click quick action pin/unpin flow,QA (STOA-Quality),"PG-129,PG-155",FILE:tests/e2e/home/home-page.spec.ts;FILE:apps/web/src/components/home/AuthenticatedHomePage.tsx,"5 Playwright E2E scenarios passing; covers auth, navigation, interactions; CI integrated; screenshots on failure; <60s total",Completed,"5 E2E scenarios passing, <60s runtime, CI integrated",15,ARTIFACT:tests/e2e/home/home-page.spec.ts;SPEC:.specify/sprints/sprint-15/specifications/PG-164-spec.md;PLAN:.specify/sprints/sprint-15/planning/PG-164-plan.md;ARTIFACT:tests/e2e/global-teardown.ts,VALIDATE:pnpm test:e2e -- --grep home,60/120/240,2026-03-07,2026-03-08,100,"PG-129:FS,PG-155:FS",
PG-165,Core CRM,Update PRD checkboxes for home page - mark completed acceptance criteria and annotate deferred items with task references,Tech Lead (STOA-Foundation),PG-129,FILE:docs/planning/prd-home-page.md,All 51 PRD checkboxes reviewed; 38 completed items marked [x]; 13 deferred items annotated with task references (PG-156 to PG-164); PRD reflects implementation state,Completed,All checkboxes accurately reflect implementation state,14,ARTIFACT:docs/planning/prd-home-page.md,VALIDATE:pnpm --filter @intelliflow/web typecheck;VALIDATE:pnpm --filter @intelliflow/web test --run,15/30/60,2026-02-22,2026-02-23,100,PG-129:FS,
PG-166,Core CRM,Lighthouse audit on authenticated home page - verify NFR targets TTI <1s Performance >=90 Accessibility >=90,QA (STOA-Quality),PG-129,FILE:apps/web/src/components/home/AuthenticatedHomePage.tsx,"Lighthouse CI audit on / route; Performance >=90, Accessibility >=90, TTI <1s; results saved to artifacts; ADR-027 verification confirmed",Completed,"Lighthouse Performance >=90, Accessibility >=90, TTI <1s",19,ARTIFACT:artifacts/benchmarks/home-page-lighthouse.json,VALIDATE:npx lighthouse http://localhost:3000 --output json,30/60/120,2026-09-06,2026-09-08,100,PG-129:FS,
PG-167,Core CRM,Analytics tracking plan for home page - define and implement business metrics events for section interactions,CRM FE (STOA-Foundation),PG-129,FILE:apps/web/src/components/home/AuthenticatedHomePage.tsx,"Analytics events for quick action clicks, insight interactions, feed scrolls, pin/unpin, goal views; tracking utility integrated; event schema documented",Completed,"All 6 home sections emit analytics events, schema documented",16,ARTIFACT:docs/analytics/home-page-tracking-plan.md;ARTIFACT:apps/web/src/lib/analytics.ts;SPEC:.specify/sprints/sprint-16/specifications/PG-167-spec.md;PLAN:.specify/sprints/sprint-16/planning/PG-167-plan.md;ATTESTATION:.specify/sprints/sprint-16/attestations/PG-167/attestation.json,VALIDATE:pnpm --filter @intelliflow/web typecheck,30/60/120,2026-03-10,2026-03-11,100,PG-129:FS,
PG-168,Core CRM,Monitoring and Sentry error tracking for home route - error boundaries breadcrumbs performance spans,ifc-ui-2,PG-129,FILE:apps/web/src/components/home/AuthenticatedHomePage.tsx,Sentry error boundary wrapping home sections; breadcrumbs for section loads; performance spans for each tRPC query; error alerts configured,Backlog,"All 6 sections have error boundaries, performance spans for 8 queries",31,ARTIFACT:apps/web/src/components/home/HomeErrorBoundary.tsx,VALIDATE:pnpm --filter @intelliflow/web typecheck;VALIDATE:pnpm --filter @intelliflow/web test --run,30/60/120,2027-02-21,2027-03-06,0,PG-129:FS,
PG-169,Developer Pages,Developer Guides Page,DevRel (STOA-Foundation),PG-032,FILE:apps/web/src/app/(developer)/docs/page.tsx;FILE:docs/docusaurus.config.js;ENV:guides content available,"Response <200ms, Lighthouse >=90, guides listed and categorized; artifacts: page.tsx, guides-list.tsx",Completed,"Guides listed, categorized by topic, links to Docusaurus guides",15,ARTIFACT:apps/web/src/app/(developer)/docs/guides/page.tsx;ARTIFACT:apps/web/src/components/developer/guides-list.tsx;EVIDENCE:.specify/sprints/sprint-15/attestations/PG-169/attestation.json,GATE:lighthouse-gte-90;VALIDATE:pnpm --filter @intelliflow/web typecheck;VALIDATE:pnpm --filter @intelliflow/web test --run,50/120/240,2026-03-01,2026-03-01,100,PG-032:FS,
PG-170,Developer Pages,Architecture Docs Page,DevRel (STOA-Foundation),PG-032,FILE:apps/web/src/app/(developer)/docs/page.tsx;FILE:docs/architecture/adr/README.md;ENV:ADR content exists,"Response <200ms, Lighthouse >=90, ADRs listed and searchable; artifacts: page.tsx, adr-list.tsx",Completed,"Architecture docs indexed, 43 ADRs linked, DDD context map shown",15,ARTIFACT:apps/web/src/app/(developer)/docs/architecture/page.tsx;ARTIFACT:apps/web/src/components/developer/adr-list.tsx;EVIDENCE:.specify/sprints/sprint-15/attestations/PG-170/attestation.json;SPEC:.specify/sprints/sprint-15/specifications/PG-170-spec.md;PLAN:.specify/sprints/sprint-15/planning/PG-170-plan.md,GATE:lighthouse-gte-90;VALIDATE:pnpm --filter @intelliflow/web typecheck;VALIDATE:pnpm --filter @intelliflow/web test --run,50/120/240,2026-03-01,2026-03-01,100,PG-032:FS,
PG-171,Developer Pages,Integration Resources Page,DevRel (STOA-Foundation),"PG-032,PG-034",FILE:apps/web/src/app/(developer)/docs/page.tsx;ENV:webhook docs ready,"Response <200ms, Lighthouse >=90, integrations documented; artifacts: page.tsx, integration-list.tsx",Completed,"Integrations listed, webhook + SDK + auth links working",15,ARTIFACT:apps/web/src/app/(developer)/docs/integrations/page.tsx;ARTIFACT:apps/web/src/components/developer/integration-list.tsx;EVIDENCE:.specify/sprints/sprint-15/attestations/PG-171/attestation.json,GATE:lighthouse-gte-90;VALIDATE:pnpm --filter @intelliflow/web typecheck;VALIDATE:pnpm --filter @intelliflow/web test --run,50/120/240,2026-02-20,2026-02-20,100,"PG-032:FS,PG-034:FS",
PG-172,Billing Pages,Billing Ghost Pages - Usage Plans Upgrade Cancel and Settings,Platform BE (STOA-Foundation),"PG-025,PG-030",IMPLEMENTS:FLOW-048;FILE:docs/planning/prd-billing-portal.md;FILE:docs/architecture/adr/ADR-029-billing-architecture.md;FILE:.specify/memory/Framework.md;FILE:audit-matrix.yml;FILE:apps/web/src/components/sidebar/configs/billing.ts;FILE:apps/web/src/components/billing/billing-portal.tsx;FILE:docs/design/navigation-reachability-audit.md;DESIGN:docs/design/mockups/billing-portal.png,Pages at /billing/usage (usage metrics vs plan limits with progress bars) /billing/plans (3-tier comparison grid Starter/Professional/Enterprise) /billing/upgrade (proration preview and confirmation) /billing/cancel (retention offer reason selection period-end behaviour) /billing/settings (billing address contact tax fields); all sidebar and billing-portal.tsx in-page links resolve; Lighthouse >=90; tests passing; verified by: pnpm test,Completed,All 5 billing ghost routes resolve; usage bars accurate; upgrade shows proration; cancel period-end confirmed; Lighthouse >=90,16,ARTIFACT:apps/web/src/app/billing/usage/page.tsx;ARTIFACT:apps/web/src/app/billing/plans/page.tsx;ARTIFACT:apps/web/src/app/billing/upgrade/page.tsx;ARTIFACT:apps/web/src/app/billing/cancel/page.tsx;ARTIFACT:apps/web/src/app/billing/settings/page.tsx;ARTIFACT:apps/web/src/components/billing/usage-dashboard.tsx;ARTIFACT:apps/web/src/components/billing/plan-comparison.tsx;ARTIFACT:apps/web/src/components/billing/upgrade-flow.tsx;ARTIFACT:apps/web/src/components/billing/cancel-flow.tsx;ARTIFACT:apps/web/src/components/billing/__tests__/usage-dashboard.test.tsx;ARTIFACT:apps/web/src/components/billing/__tests__/plan-comparison.test.tsx;ARTIFACT:apps/web/src/components/billing/__tests__/upgrade-flow.test.tsx;ARTIFACT:apps/web/src/components/billing/__tests__/cancel-flow.test.tsx;ARTIFACT:apps/web/src/components/billing/__tests__/billing-settings.test.tsx;ARTIFACT:apps/web/src/components/billing/billing-shared.tsx;ARTIFACT:apps/web/src/components/billing/billing-settings.tsx;EVIDENCE:.specify/sprints/sprint-16/attestations/PG-172/attestation.json;EVIDENCE:.specify/sprints/sprint-16/attestations/PG-172/attestation.json;SPEC:.specify/sprints/sprint-16/specifications/PG-172-spec.md;PLAN:.specify/sprints/sprint-16/planning/PG-172-plan.md,GATE:lighthouse-gte-90;VALIDATE:pnpm test,180/360/720,2026-03-10,2026-03-10,100,"PG-025:FS,PG-030:FS",
PG-173,Support,Ticket Configuration Pages - SLA Policies Types and Automations,Frontend Dev (STOA-Domain),"PG-137,IFC-189,IFC-093",FILE:apps/web/src/components/sidebar/configs/tickets.ts;FILE:apps/api/src/modules/ticket/ticket.router.ts;FILE:packages/domain/src/crm/ticket/Ticket.ts;FILE:packages/domain/src/support/TicketConstants.ts;FILE:.specify/memory/Framework.md;FILE:audit-matrix.yml;FILE:docs/design/navigation-reachability-audit.md;DESIGN:docs/design/mockups/tickets-config.png,Pages at /tickets/sla-policies (SLA rule list with priority and time targets CRUD) /tickets/types (ticket category list with custom field definitions) /tickets/automations (trigger-condition-action rule builder for auto-assignment and status transitions); sidebar Configuration section links resolve; Lighthouse >=90; verified by: pnpm test,Completed,All 3 ticket config routes resolve; SLA rules CRUD working; types editable; automations rule engine renders; 96 total tests pass (57 frontend + 16 backend + 23 validators),16,ARTIFACT:apps/web/src/app/tickets/(list)/sla-policies/page.tsx;ARTIFACT:apps/web/src/app/tickets/types/page.tsx;ARTIFACT:apps/web/src/app/tickets/automations/page.tsx;ARTIFACT:apps/web/src/components/tickets/SLAPolicyManager.tsx;ARTIFACT:apps/web/src/components/tickets/TicketTypeManager.tsx;ARTIFACT:apps/web/src/components/tickets/AutomationRuleBuilder.tsx;ARTIFACT:apps/web/src/components/tickets/ticket-config-shared.tsx;ARTIFACT:apps/web/src/components/tickets/__tests__/SLAPolicyManager.test.tsx;ARTIFACT:apps/web/src/components/tickets/__tests__/TicketTypeManager.test.tsx;ARTIFACT:apps/web/src/components/tickets/__tests__/AutomationRuleBuilder.test.tsx;ARTIFACT:packages/validators/src/sla-policy.ts;ARTIFACT:packages/validators/src/ticket-category.ts;ARTIFACT:packages/validators/src/__tests__/ticket-config-validators.test.ts;ARTIFACT:apps/api/src/modules/ticket/ticket-config.router.ts;ARTIFACT:apps/api/src/modules/ticket/__tests__/ticket-config.router.test.ts;EVIDENCE:.specify/sprints/sprint-16/attestations/PG-173/attestation.json;SPEC:.specify/sprints/sprint-16/specifications/PG-173-spec.md;PLAN:.specify/sprints/sprint-16/planning/PG-173-plan.md,GATE:lighthouse-gte-90;VALIDATE:pnpm test,120/240/480,2026-03-10,2026-03-10,100,"PG-137:FS,IFC-189:FS,IFC-093:FS",
PG-174,Notifications,Notification Configuration Pages - Channels and Quiet Hours,Frontend Dev (STOA-Domain),IFC-157,FILE:apps/web/src/components/sidebar/configs/notifications.ts;FILE:apps/web/src/app/notifications/settings/page.tsx;FILE:.specify/memory/Framework.md;FILE:audit-matrix.yml;FILE:docs/design/navigation-reachability-audit.md;DESIGN:docs/design/mockups/notifications-config.png,Pages at /notifications/channels (delivery channel list with enable/disable toggles and per-channel config for email SMS push webhook) and /notifications/quiet-hours (weekly schedule grid with time-range pickers and day selectors for suppression windows); sidebar Configuration links resolve; Lighthouse >=90; verified by: pnpm test,Completed,Both notification config routes resolve; channels enable/disable toggles; quiet-hours schedule saves; Lighthouse >=90,16,ARTIFACT:apps/web/src/app/notifications/channels/page.tsx;ARTIFACT:apps/web/src/app/notifications/quiet-hours/page.tsx;ARTIFACT:apps/web/src/components/notifications/ChannelManager.tsx;ARTIFACT:apps/web/src/components/notifications/QuietHoursScheduler.tsx;ARTIFACT:apps/web/src/components/notifications/__tests__/ChannelManager.test.tsx;ARTIFACT:apps/web/src/components/notifications/__tests__/QuietHoursScheduler.test.tsx;SPEC:.specify/sprints/sprint-16/specifications/PG-174-spec.md;EVIDENCE:.specify/sprints/sprint-16/attestations/PG-174/attestation.json,GATE:lighthouse-gte-90;VALIDATE:pnpm test,90/180/360,2026-03-10,2026-03-12,100,IFC-157:FS,
PG-175,Core CRM,Deals Trash Page - Soft-deleted deals list with restore and permanent delete,Frontend Dev (STOA-Domain),PG-135,FILE:apps/web/src/components/sidebar/configs/deals.ts;FILE:apps/api/src/modules/opportunity/opportunity.router.ts;FILE:packages/adapters/src/repositories/PrismaOpportunityRepository.ts;FILE:.specify/memory/Framework.md;FILE:audit-matrix.yml;FILE:docs/design/navigation-reachability-audit.md,Page at /deals/trash showing soft-deleted deals list with deal name value stage-at-deletion date; restore action (reverts deletedAt) and permanent delete with confirmation dialog; follows /deals data-table pattern; sidebar trash link resolves; Lighthouse >=90; verified by: pnpm test,Completed,Deals trash page resolves; restore working; permanent delete with confirm dialog; data-table pattern; Lighthouse >=90,16,ARTIFACT:apps/web/src/app/deals/(list)/trash/page.tsx;ARTIFACT:apps/web/src/components/deals/TrashList.tsx;ARTIFACT:apps/web/src/components/deals/__tests__/TrashList.test.tsx;EVIDENCE:.specify/sprints/sprint-16/attestations/PG-175/attestation.json;SPEC:.specify/sprints/sprint-16/specifications/PG-175-spec.md;PLAN:.specify/sprints/sprint-16/planning/PG-175-plan.md,GATE:lighthouse-gte-90;VALIDATE:pnpm test,60/120/240,2026-03-18,,100,PG-135:FS,
PG-176,Governance,Governance Quality Report Sub-Pages - Lighthouse Coverage and Performance views,Frontend Dev (STOA-Quality),PG-015,FILE:apps/web/src/components/sidebar/configs/governance.ts;FILE:apps/web/src/app/governance/quality-reports/page.tsx;FILE:.specify/memory/Framework.md;FILE:audit-matrix.yml;FILE:docs/design/navigation-reachability-audit.md;DESIGN:docs/design/mockups/quality-reports-detail.png,Pages at /governance/quality-reports/lighthouse (Lighthouse scores by URL with category breakdown and historical trend) /governance/quality-reports/coverage (test coverage by package with statements branches functions lines) /governance/quality-reports/performance (API response time and load test results); each renders focused report type with back-link to quality-reports list; sidebar Quality links resolve; Lighthouse >=90; verified by: pnpm test,Completed,All 3 quality report sub-routes resolve; each shows focused report data; back-navigation works; Lighthouse >=90,16,ARTIFACT:apps/web/src/app/governance/quality-reports/lighthouse/page.tsx;ARTIFACT:apps/web/src/app/governance/quality-reports/coverage/page.tsx;ARTIFACT:apps/web/src/app/governance/quality-reports/performance/page.tsx;ARTIFACT:apps/web/src/components/governance/LighthouseReportView.tsx;ARTIFACT:apps/web/src/components/governance/CoverageReportView.tsx;ARTIFACT:apps/web/src/components/governance/PerformanceReportView.tsx;ARTIFACT:apps/web/src/components/governance/__tests__/LighthouseReportView.test.tsx;ARTIFACT:apps/web/src/components/governance/__tests__/CoverageReportView.test.tsx;ARTIFACT:apps/web/src/components/governance/__tests__/PerformanceReportView.test.tsx;EVIDENCE:.specify/sprints/sprint-16/attestations/PG-176/attestation.json;SPEC:.specify/sprints/sprint-16/specifications/PG-176-spec.md;PLAN:.specify/sprints/sprint-16/planning/PG-176-plan.md,GATE:lighthouse-gte-90;VALIDATE:pnpm test,90/180/360,2026-03-15,,100,PG-015:FS,
PG-177,Analytics,Analytics Saved Report Pages - Weekly Monthly and Quarterly views,Frontend Dev (STOA-Foundation),IFC-068,FILE:apps/web/src/components/sidebar/configs/analytics.ts;FILE:apps/web/src/app/analytics/(list)/page.tsx;FILE:.specify/memory/Framework.md;FILE:audit-matrix.yml;FILE:docs/design/navigation-reachability-audit.md;DESIGN:docs/design/mockups/analytics-saved-reports.png,Pages at /analytics/saved/weekly (last 7 days metrics: revenue leads tickets closed with trend indicators) /analytics/saved/monthly (last 30 days revenue breakdown by product and region) /analytics/saved/quarterly (Q4 performance summary with YoY comparison); sidebar Saved Reports links resolve; Lighthouse >=90; verified by: pnpm test,Completed,All 3 saved report routes resolve; weekly/monthly/quarterly data renders; period selector works; Lighthouse >=90,16,ARTIFACT:apps/web/src/app/analytics/(list)/saved/weekly/page.tsx;ARTIFACT:apps/web/src/app/analytics/(list)/saved/monthly/page.tsx;ARTIFACT:apps/web/src/app/analytics/(list)/saved/quarterly/page.tsx;ARTIFACT:apps/web/src/components/analytics/SavedReportView.tsx;ARTIFACT:apps/web/src/components/analytics/__tests__/SavedReportView.test.tsx;EVIDENCE:.specify/sprints/sprint-16/attestations/PG-177/attestation.json,GATE:lighthouse-gte-90;VALIDATE:pnpm test,90/180/360,2026-03-16,2026-03-16,100,IFC-068:FS,
PG-178,Settings,Module Settings Pages - 11 per-module configuration pages at /settings/[module],Frontend Dev (STOA-Foundation),"PG-104,IFC-076",FILE:apps/web/src/components/sidebar/configs/leads.ts;FILE:apps/web/src/components/sidebar/configs/contacts.ts;FILE:apps/web/src/components/sidebar/configs/accounts.ts;FILE:apps/web/src/components/sidebar/configs/deals.ts;FILE:apps/web/src/components/sidebar/configs/tickets.ts;FILE:apps/web/src/components/sidebar/configs/documents.ts;FILE:apps/web/src/components/sidebar/configs/analytics.ts;FILE:apps/web/src/components/sidebar/configs/appointments.ts;FILE:apps/web/src/components/sidebar/configs/cases.ts;FILE:apps/web/src/components/sidebar/configs/tasks.ts;FILE:apps/web/src/components/ModulePaywall.tsx;FILE:apps/web/src/app/settings/account/page.tsx;FILE:.specify/memory/Framework.md;FILE:audit-matrix.yml;FILE:docs/design/navigation-reachability-audit.md;DESIGN:docs/design/mockups/module-settings.png;DESIGN:docs/design/mockups/lead-settings.html;DESIGN:docs/design/mockups/lead-settings.png,Pages at /settings/leads (scoring thresholds assignment auto-qual) /settings/contacts (duplicate detection required fields tags) /settings/accounts (hierarchy industry custom fields) /settings/deals (pipeline stages win-loss reasons scoring) /settings/tickets (default SLA auto-close notification triggers) /settings/documents (file types size limits antivirus retention) /settings/reports (default range currency scheduled delivery) /settings/billing (billing address tax ID invoice contact) /settings/appointments (duration buffer calendar integration) /settings/cases (case prefix default priority auto-assign) /settings/tasks (due-date offset reminder templates); all settingsHref and ModulePaywall links resolve; follows settings/account pattern; Lighthouse >=90; verified by: pnpm test,Completed,All 11 module settings routes resolve; form fields render and save; breadcrumb navigation works; Lighthouse >=90,16,ARTIFACT:apps/web/src/app/settings/leads/page.tsx;ARTIFACT:apps/web/src/app/settings/leads/LeadSettingsContent.tsx;ARTIFACT:apps/web/src/app/settings/leads/components/LeadStagesTab.tsx;ARTIFACT:apps/web/src/app/settings/leads/components/ScoringRulesTab.tsx;ARTIFACT:apps/web/src/app/settings/leads/components/CustomFieldsTab.tsx;ARTIFACT:apps/web/src/app/settings/leads/components/AutomationTab.tsx;ARTIFACT:apps/web/src/components/settings/ModuleSettingsLayout.tsx;ARTIFACT:apps/web/src/components/settings/__tests__/ModuleSettingsLayout.test.tsx;ARTIFACT:apps/api/src/modules/lead/lead-settings.router.ts;ARTIFACT:packages/validators/src/lead-settings.ts;EVIDENCE:.specify/sprints/sprint-16/attestations/PG-178/attestation.json,GATE:lighthouse-gte-90;VALIDATE:pnpm test,240/480/960,2026-03-11,2026-03-11,100,"PG-104:FS,IFC-076:FS",SPEC:.specify/sprints/sprint-16/specifications/PG-178-spec.md;PLAN:.specify/sprints/sprint-16/planning/PG-178-plan.md
DOC-002,Documentation,"Update sitemap.md to reflect actual 101 page.tsx files, add app/sitemap.ts XML generator, app/robots.ts, reconcile against navigation-reachability-audit.md",DevRel (STOA-Foundation),,FILE:docs/design/sitemap.md;FILE:docs/design/navigation-reachability-audit.md;FILE:.specify/memory/Framework.md;FILE:audit-matrix.yml,sitemap.md updated to 101+ pages; app/sitemap.ts generates XML sitemap; app/robots.ts exists; route count matches navigation-reachability-audit.md; verified by: pnpm test,Completed,Sitemap reflects 101+ actual routes; XML sitemap accessible at /sitemap.xml; robots.txt accessible at /robots.txt,14,ARTIFACT:docs/design/sitemap.md;ARTIFACT:apps/web/src/app/sitemap.ts;ARTIFACT:apps/web/src/app/robots.ts,VALIDATE:pnpm test,60/120/240,2026-02-23,2026-02-23,100,,
DOC-003,Documentation,"Update PAGE_MAP_AND_FLOWS.md to reflect 103 pages and current flows, verify auth diagrams, update API integration checklist, reconcile with audit",DevRel (STOA-Foundation),DOC-002,FILE:docs/design/PAGE_MAP_AND_FLOWS.md;FILE:docs/design/navigation-reachability-audit.md;FILE:.specify/memory/Framework.md;FILE:audit-matrix.yml,PAGE_MAP_AND_FLOWS.md updated to 103 pages; flow table current; auth diagrams verified; integration checklist reflects actual state; verified by: manual review + TC-31 automated parity test,Completed,Page count matches actual routes (103); all flows documented; integration status accurate; cross-doc consistency verified,14,ARTIFACT:docs/design/PAGE_MAP_AND_FLOWS.md,VALIDATE:pnpm lint,60/120/240,2026-02-23,2026-02-24,100,DOC-002:FS,
DOC-004,Documentation,"Update ui-flow-mapping.md cross-reference matrix to 103 routes, verify API router procedure counts (39 routers, 366 procedures), update implementation and backend integration status",DevRel (STOA-Foundation),DOC-002,FILE:docs/design/ui-flow-mapping.md;FILE:docs/design/navigation-reachability-audit.md;FILE:.specify/memory/Framework.md;FILE:audit-matrix.yml,ui-flow-mapping.md reflects 103 routes; 39 API routers with 366 procedures verified; implementation status accurate; backend integration status current; verified by: manual review + spot-checks,Completed,Route count matches actual (103); procedure counts verified (366); no stale status entries; 12/12 AC passed,14,ARTIFACT:docs/design/ui-flow-mapping.md,VALIDATE:pnpm lint,90/180/360,2026-02-23,2026-02-24,100,DOC-002:FS,
DOC-005,Documentation,"Complete overhaul of page-registry.md from 8 routes to all 101 routes with task ID, KPI targets, code file path, component breakdown, API router, E2E test path, RACI assignments",DevRel (STOA-Foundation),DOC-002,FILE:docs/design/page-registry.md;FILE:docs/design/navigation-reachability-audit.md;FILE:docs/design/ui-flow-mapping.md;FILE:.specify/memory/Framework.md;FILE:audit-matrix.yml,page-registry.md covers all 101 routes; status reflects verified state; KPI targets for each page; RACI assignments updated; component breakdowns current; verified by: manual review,Completed,All 103 routes registered; 0 stale status entries; KPI targets defined for all pages,14,ARTIFACT:docs/design/page-registry.md,VALIDATE:pnpm lint,120/240/480,2026-02-23,2026-02-24,100,DOC-002:FS,
DOC-006,Documentation,"Create unified IA reference combining reachability audit route inventory with flow mapping user journey context, linking routes to flows to components to APIs to nav layers",DevRel (STOA-Foundation),"DOC-002,DOC-003,DOC-004,DOC-005",FILE:docs/design/navigation-reachability-audit.md;FILE:docs/design/ui-flow-mapping.md;FILE:docs/design/PAGE_MAP_AND_FLOWS.md;FILE:docs/design/page-registry.md;FILE:.specify/memory/Framework.md;FILE:audit-matrix.yml,Unified IA reference doc created combining route inventory with user journey context; links routes to flows to components to APIs to nav layers; cross-references all 4 source documents; verified by: manual review,Completed,Single reference covering 103 routes with journey context; no conflicting data across source docs,14,ARTIFACT:docs/design/information-architecture.md,VALIDATE:pnpm lint,120/240/480,2026-02-24,2026-02-24,100,"DOC-002:FS,DOC-003:FS,DOC-004:FS,DOC-005:FS",
DOC-007,Documentation,"Conduct full accessibility compliance gap assessment: Lighthouse a11y audit on all 27 URLs, document WCAG 2.1 AA conformance level per route, identify all Level A and AA failures, produce gap report with remediation priorities",QA (STOA-Quality),,FILE:docs/company/brand/accessibility-patterns.md;FILE:lighthouserc.js;FILE:.specify/memory/Framework.md;FILE:audit-matrix.yml,Accessibility gap report produced; Lighthouse audit run on all 27 URLs; WCAG failures categorized by level (A/AA) and severity; remediation priority list created; verified by: pnpm run lighthouse,Completed,All 26 URLs audited; all WCAG 2.1 AA failures documented; remediation plan with priorities,14,ARTIFACT:docs/compliance-and-governance/compliance/accessibility-gap-assessment.md,VALIDATE:pnpm lint,210/240/360,2026-02-23,2026-02-23,100,,
DOC-008,Documentation,"Create VPAT 2.5 document, WCAG 2.1 AA conformance statement, axe-core/pa11y test suite, enforce accessibility in CI (error not warn), accessibility ADR, screen reader testing plan",QA (STOA-Security),DOC-007,FILE:docs/compliance-and-governance/compliance/accessibility-gap-assessment.md;FILE:docs/company/brand/accessibility-patterns.md;FILE:lighthouserc.js;FILE:docs/architecture/adr/template.md;FILE:.specify/memory/Framework.md;FILE:audit-matrix.yml,VPAT document created following ITI VPAT 2.5 template; WCAG conformance statement published; axe-core test suite added; lighthouserc.js accessibility as error; ADR for accessibility architecture created; screen reader testing plan documented; verified by: pnpm test,Completed,VPAT covers 50 WCAG 2.1 A+AA criteria; conformance statement internal Sprint 14 (public deferred Sprint 17); axe-core 8 tests in CI; lighthouse accessibility ≥0.9,14,ARTIFACT:docs/compliance-and-governance/compliance/vpat-2.5.md;ARTIFACT:docs/compliance-and-governance/compliance/wcag-conformance-statement.md;ARTIFACT:tests/a11y/axe-core.spec.ts;ARTIFACT:tests/a11y/vitest.config.ts;ARTIFACT:tests/a11y/setup.ts;ARTIFACT:docs/architecture/adr/ADR-038-accessibility-architecture.md,VALIDATE:pnpm test;GATE:lighthouse-accessibility-gte-90,180/360/720,2026-02-23,2026-02-24,100,DOC-007:FS,
DOC-009,Documentation,"Create content audit framework and perform initial audit: quantitative URL inventory (103 routes with HTTP status, response time, title, meta), qualitative content review, SEO audit for public pages, stale content detection",DevRel (STOA-Foundation),"DOC-002,DOC-005",FILE:docs/design/navigation-reachability-audit.md;FILE:docs/design/page-registry.md;FILE:.specify/memory/Framework.md;FILE:audit-matrix.yml,Content audit framework created; initial audit covering all 103 routes; quantitative metrics captured; qualitative review for each page; SEO audit for public pages; stale content identified; verified by: manual review,Completed,All 104 routes audited; 25 public pages scored for SEO (avg 56/100); 28 ghost links classified; 3 critical legal page gaps; stale content identified; 14 test cases pass,14,ARTIFACT:docs/design/content-audit.md;ARTIFACT:artifacts/reports/content-audit-results.json,VALIDATE:pnpm lint,120/240/480,2026-02-24,2026-02-24,100,"DOC-002:FS,DOC-005:FS",
DOC-010,Documentation,Create route reconciliation script comparing conformance-statement.md routes against apps/web/src/app/ directory tree,PM (STOA-Automation),DOC-008,FILE:docs/compliance-and-governance/compliance/wcag-conformance-statement.md;FILE:apps/web/src/app/layout.tsx,Route reconciliation TypeScript script created; scans conformance-statement.md route list vs actual app router directories; reports added/removed/missing routes; exits non-zero on drift; integrated as CI check; verified by: script execution with intentional drift,Completed,Detects route drift within 1 CI run; zero false positives on current routes; 41 tests; 93%+ coverage; CI wired in pr-checks.yml,15,ARTIFACT:tools/scripts/a11y-route-reconcile.ts;ARTIFACT:tools/scripts/a11y-route-reconcile.test.ts,VALIDATE:npx tsx tools/scripts/a11y-route-reconcile.ts,30/60/120,2026-02-27,2026-02-28,100,DOC-008:FS,
DOC-011,Documentation,Add compliance-check Section 11 requiring VPAT/conformance review when PG-*/IFC-* UI tasks add or modify routes,PM (STOA-Automation),DOC-008,FILE:.claude/skills/compliance-check/SKILL.md;FILE:docs/compliance-and-governance/compliance/vpat-2.5.md;FILE:docs/compliance-and-governance/compliance/wcag-conformance-statement.md,compliance-check skill updated with Section 11 (Accessibility Doc Gate); detects new/modified routes in task artifacts; blocks completion if VPAT/conformance docs not updated; verified by: dry-run on a PG-* task with new route,Completed,Gate triggers on 100% of route-adding UI tasks; zero false negatives; DR-001 PG-032→SKIP; DR-002 /insights→FAIL; 41 regression tests pass,15,ARTIFACT:.agents/skills/compliance-check/references/accessibility-doc-gate.md;ARTIFACT:.agents/skills/compliance-check/SKILL.md,AUDIT:code-review,30/60/120,2026-03-01,2026-03-01,100,DOC-008:FS,
DOC-012,Documentation,Establish quarterly accessibility documentation review cadence with recurring sprint task template,PM (STOA-Automation),DOC-008,FILE:docs/compliance-and-governance/compliance/vpat-2.5.md;FILE:docs/compliance-and-governance/compliance/wcag-conformance-statement.md;FILE:docs/compliance-and-governance/compliance/accessibility-gap-assessment.md,"Review template created with checklist (VPAT accuracy, conformance scope, route coverage, known limitations, AT testing schedule); first quarterly review scheduled in Sprint_plan.csv; cadence documented in project governance; verified by: template completeness review",Completed,Review template covers all 5 accessibility doc areas; cadence is every 4 sprints,15,ARTIFACT:docs/compliance-and-governance/compliance/quarterly-a11y-review-template.md,VALIDATE:pnpm lint,20/40/80,2026-03-01,2026-03-01,100,DOC-008:FS,
DOC-013,Documentation,Amend ADR-038 with Documentation Maintenance section mandating accessibility doc updates when scope changes,PM (STOA-Automation),DOC-008,FILE:docs/architecture/adr/ADR-038-accessibility-architecture.md,"ADR-038 amended with Documentation Maintenance section defining: triggers for updates (new routes, component changes, WCAG scope changes), responsible party, review frequency, update verification process; linked to DOC-010/011/012 as enforcement mechanisms; verified by: ADR review",Completed,ADR covers all 4 update trigger categories; links to enforcement tasks,15,ARTIFACT:docs/architecture/adr/ADR-038-accessibility-architecture.md;EVIDENCE:.specify/sprints/sprint-15/specifications/DOC-013-spec.md;EVIDENCE:.specify/sprints/sprint-15/planning/DOC-013-plan.md,VALIDATE:pnpm lint,15/30/60,2026-03-02,2026-03-02,100,DOC-008:FS,
PG-179,Public Pages,Press Release Detail Page - dynamic /press/[id] route for individual press releases linked from /press index page (content audit finding F-004),CRM FE (STOA-Foundation),PG-007,FILE:apps/web/src/app/(public)/press/page.tsx;FILE:artifacts/reports/content-audit-results.json,Page at /press/[id] renders individual press release with title date body and back-link to /press index; generateMetadata for SEO; OG tags for social sharing; Lighthouse >=90; /press index links resolve without 404; verified by: pnpm test,Completed,Response <200ms; Lighthouse >=90; SEO score >=80; zero 404 from /press links,15,ARTIFACT:apps/web/src/app/(public)/press/[id]/page.tsx;ARTIFACT:apps/web/src/components/press/PressReleaseDetail.tsx;ARTIFACT:apps/web/src/components/press/__tests__/PressReleaseDetail.test.tsx;EVIDENCE:.specify/sprints/sprint-15/specifications/PG-179-spec.md;EVIDENCE:.specify/sprints/sprint-15/planning/PG-179-plan.md,VALIDATE:pnpm test;GATE:lighthouse-gte-90,60/120/240,2026-03-01,2026-03-01,100,PG-007:FS,
IFC-208,SEO,Lighthouse SEO CI enforcement and og:image - change lighthouserc.js SEO assertion from warn to error and add og:image meta tag to root layout (content audit findings F-005 F-006),ifc-ui-2,DOC-009,FILE:lighthouserc.js;FILE:apps/web/src/app/layout.tsx;FILE:artifacts/reports/content-audit-results.json,lighthouserc.js SEO assertions use level error not warn; og:image meta tag defined in root layout metadata; all 25 public pages inherit og:image for social sharing previews; Lighthouse CI blocks on SEO regression; verified by: pnpm test && pnpm run lighthouse,Backlog,SEO assertion level = error; og:image present on all 25 public routes; Lighthouse SEO >=0.9,39,ARTIFACT:lighthouserc.js;ARTIFACT:apps/web/src/app/layout.tsx;ARTIFACT:public/og-image.png,VALIDATE:pnpm test;VALIDATE:pnpm run lighthouse;GATE:lighthouse-gte-90,30/60/120,2027-06-13,2027-06-26,0,DOC-009:FS,
IFC-209,SEO,"Fix sitemap.ts defects - replace new Date() lastModified with actual file modification timestamps, add all 6 blog post slugs, add dynamic route entries for /careers/[id] and /lp/[slug] (content audit findings F-007 F-008 F-009)",CRM FE (STOA-Foundation),"DOC-002,DOC-009",FILE:apps/web/src/app/sitemap.ts;FILE:artifacts/reports/content-audit-results.json,sitemap.ts uses statSync or build-time timestamps for lastModified instead of new Date(); all 6 blog post slugs included in sitemap; dynamic routes /careers/[id] and /lp/[slug] generate sitemap entries from data source; verified by: pnpm test,Completed,All routes have accurate lastModified; blog coverage 2/2 slugs (detail pages); dynamic routes included; zero crawl-budget waste; 100% coverage on sitemap.ts,15,ARTIFACT:apps/web/src/app/sitemap.ts;ARTIFACT:apps/web/src/app/__tests__/sitemap-fixes.test.ts,VALIDATE:pnpm test;GATE:coverage-gte-90,60/120/240,2026-03-02,2026-03-03,100,"DOC-002:FS,DOC-009:FS",SPEC:.specify/sprints/sprint-15/specifications/IFC-209-spec.md;PLAN:.specify/sprints/sprint-15/planning/IFC-209-plan.md
IFC-210,SEO,"Fill SEO metadata gaps on public pages - add description OG and Twitter tags to /pricing, complete OG tags on /about and /features, add layout-level metadata for auth-flow pages (content audit findings F-010 F-011 F-012)",CRM FE (STOA-Foundation),DOC-009,FILE:apps/web/src/app/(public)/pricing/page.tsx;FILE:apps/web/src/app/(public)/about/page.tsx;FILE:apps/web/src/app/(public)/features/page.tsx;FILE:apps/web/src/app/(public)/login/layout.tsx;FILE:artifacts/reports/content-audit-results.json,/pricing has description OG and Twitter card metadata; /about and /features have complete og:description og:url and twitter:title twitter:description; auth-flow layout provides base metadata for login signup and reset pages; all public page SEO scores >=75; verified by: pnpm test,Completed,Public pages avg SEO score >=75 (up from 56); all public pages have description + OG + Twitter tags,15,ARTIFACT:apps/web/src/app/(public)/pricing/layout.tsx;ARTIFACT:apps/web/src/app/(public)/about/page.tsx;ARTIFACT:apps/web/src/app/(public)/features/page.tsx;ARTIFACT:apps/web/src/app/(public)/login/layout.tsx,VALIDATE:pnpm test;GATE:lighthouse-gte-90,60/120/240,2026-03-02,2026-03-03,100,DOC-009:FS,SPEC:.specify/sprints/sprint-15/specifications/IFC-210-spec.md;PLAN:.specify/sprints/sprint-15/planning/IFC-210-plan.md;EVIDENCE:.specify/sprints/sprint-15/attestations/IFC-210/attestation.json
DOC-014,Documentation,"Automated content audit script - TypeScript CLI that scans page.tsx files, resolves metadata chains, calculates SEO scores, detects ghost links, and regenerates content-audit-results.json; integrates as CI check on PR modifying app routes",PM (STOA-Automation),DOC-009,FILE:artifacts/reports/content-audit-results.json;FILE:docs/design/content-audit.md;FILE:apps/web/src/app/sitemap.ts;FILE:apps/web/src/__tests__/content-audit-schema.test.ts,Script at tools/scripts/content-audit.ts scans all page.tsx files enumerates routes resolves metadata chain calculates SEO scores per rubric in content-audit.md detects ghost links against navigation-reachability-audit.md and regenerates content-audit-results.json; output passes all 14 existing test cases; exits non-zero if route count drifts or new findings detected; CI workflow triggers on PR modifying apps/web/src/app/**/page.tsx or layout.tsx; verified by: npx tsx tools/scripts/content-audit.ts && pnpm test,Completed,Script regenerates JSON matching schema; 14 existing tests pass on output; CI runs on route-modifying PRs; <30s execution time,15,ARTIFACT:tools/scripts/content-audit.ts;ARTIFACT:.github/workflows/content-audit.yml;ARTIFACT:tools/scripts/__tests__/content-audit.test.ts,VALIDATE:npx tsx tools/scripts/content-audit.ts;VALIDATE:pnpm test;GATE:coverage-gte-90,120/240/480,2026-03-07,2026-03-07,100,DOC-009:FS,
DOC-015,Documentation,Docs Integrity Reconciliation - Regenerate and sync conflicting design-document route totals from filesystem source of truth,PM + DevRel (STOA-Automation),"DOC-014,IFC-209,IFC-210",FILE:apps/project-tracker/docs/metrics/_global/Tabela .txt;FILE:apps/web/src/app;FILE:docs/design/sitemap.md;FILE:docs/design/page-registry.md;FILE:docs/design/PAGE_MAP_AND_FLOWS.md;FILE:docs/design/ui-flow-mapping.md;FILE:docs/design/navigation-reachability-audit.md;FILE:docs/design/information-architecture.md;FILE:docs/design/content-audit.md,"All conflicting route and summary totals are regenerated from apps/web/src/app/**/page.tsx and synchronized across sitemap.md, page-registry.md, PAGE_MAP_AND_FLOWS.md, ui-flow-mapping.md, navigation-reachability-audit.md, information-architecture.md, and content-audit.md; stale references (68/101/103/118 mismatches) are removed or explicitly reconciled; each updated doc includes canonical counting rule and verification timestamp; verified by: npx tsx tools/scripts/content-audit.ts && pnpm lint",Completed,Cross-doc total mismatch count = 0; canonical route count matches filesystem (currently 119); stale total references removed from target docs; doc lint passes,18,ARTIFACT:docs/design/sitemap.md;ARTIFACT:docs/design/page-registry.md;ARTIFACT:docs/design/PAGE_MAP_AND_FLOWS.md;ARTIFACT:docs/design/ui-flow-mapping.md;ARTIFACT:docs/design/navigation-reachability-audit.md;ARTIFACT:docs/design/information-architecture.md;ARTIFACT:docs/design/content-audit.md;EVIDENCE:.specify/sprints/sprint-18/attestations/DOC-015/context_ack.json,VALIDATE:npx tsx tools/scripts/content-audit.ts;VALIDATE:pnpm lint;GATE:docs-route-count-consistency,90/180/360,,,0,"DOC-014:FS,IFC-209:FS,IFC-210:FS",
DOC-016,Documentation,Docs Integrity CI Gate - Automated cross-document route-total drift detection and PR enforcement,PM (STOA-Automation),"DOC-014,DOC-015",FILE:tools/scripts/content-audit.ts;FILE:docs/design/content-audit.md;FILE:docs/design/sitemap.md;FILE:docs/design/page-registry.md;FILE:docs/design/PAGE_MAP_AND_FLOWS.md;FILE:docs/design/ui-flow-mapping.md;FILE:docs/design/navigation-reachability-audit.md;FILE:docs/design/information-architecture.md,TypeScript CLI docs-integrity-audit validates canonical route totals and key summary aggregates across target design docs; CI workflow runs on app route and docs changes and fails on any drift; tests cover mismatch scenarios and false-positive guardrails; verified by: npx tsx tools/scripts/docs-integrity-audit.ts && pnpm test,Completed,CI detection rate = 100% for injected mismatches; false positives <=1%; script execution <30s; test coverage >=90%,18,ARTIFACT:tools/scripts/docs-integrity-audit.ts;ARTIFACT:tools/scripts/__tests__/docs-integrity-audit.test.ts;ARTIFACT:.github/workflows/docs-integrity.yml;ARTIFACT:docs/design/content-audit.md;EVIDENCE:.specify/sprints/sprint-18/attestations/DOC-016/context_ack.json,VALIDATE:npx tsx tools/scripts/docs-integrity-audit.ts;VALIDATE:pnpm test;GATE:coverage-gte-90;GATE:docs-integrity-pass,60/120/240,,,0,"DOC-014:FS,DOC-015:FS",
IFC-211,Core CRM,Goal Settings RBAC - Role-based permissions for daily goal management (manager team goals and admin org defaults),Backend Dev (STOA-Domain),"IFC-195,IFC-098",FILE:apps/api/src/modules/home/home.router.ts;FILE:apps/api/src/security/rbac.ts;FILE:apps/api/src/security/types.ts;FILE:packages/db/prisma/schema.prisma;FILE:docs/planning/prd-home-page.md,Manager can set goals for team members via targetUserId param; admin can define org-wide default goals; self-service respects RBAC boundaries; goal resource type added to RBAC permission matrix; audit trail logs goal changes; verified by: pnpm test,Completed,RBAC enforced on all goal endpoints; manager team-goal override works; admin defaults applied for new users; audit log captures goal changes; test coverage >=90%,18,ARTIFACT:apps/api/src/modules/home/home.router.ts;ARTIFACT:apps/api/src/modules/home/__tests__/home-rbac.test.ts;ARTIFACT:apps/api/src/security/types.ts;EVIDENCE:.specify/sprints/sprint-18/attestations/IFC-211/context_ack.json,VALIDATE:pnpm test;GATE:coverage-gte-90,120/240/480,,,0,"IFC-195:FS,IFC-098:FS",
IFC-212,AI/ML,Wire API container to QueueAIService for BullMQ-backed lead scoring,Backend Dev + AI Specialist (STOA-Intelligence),"IFC-015,IFC-125,IFC-168",FILE:apps/api/src/container.ts;FILE:apps/api/src/modules/leads/LeadService.ts;FILE:apps/api/src/modules/leads/AIServicePort.ts;FILE:apps/ai-worker/src/queue/jobs/scoring.job.ts;FILE:apps/ai-worker/src/queue/ai-consumer.ts;FILE:docs/architecture/adr/ADR-031-ai-worker-container.md;FILE:docs/architecture/adr/ADR-036-bullmq-task-processing.md;ENV:REDIS_URL configured;ENV:AI worker queue processing enabled,API container resolves QueueAIService for lead scoring requests; GuardrailsAIService remains decorator over queue-backed provider; lead scoring jobs are enqueued with correlation metadata and consumed by ai-scoring worker contract; retry and failure handling follow BullMQ defaults; verified by: pnpm test --filter api;pnpm test --filter ai-worker,Completed,Enqueue success rate >=99%; scoring completion SLA P95 <=30s; queue failure rate <1%; test coverage >=90%,18,ARTIFACT:apps/api/src/services/queue/QueueAIService.ts;ARTIFACT:apps/api/src/container.ts;ARTIFACT:apps/ai-worker/src/jobs/scoring.job.ts;EVIDENCE:.specify/sprints/sprint-18/attestations/IFC-212/context_ack.json,VALIDATE:pnpm test --filter api;VALIDATE:pnpm test --filter ai-worker;GATE:coverage-gte-90,90/180/360,,,0,"IFC-015:FS,IFC-125:FS,IFC-168:FS",
IFC-213,Integrations,Replace Math.random connector health checks with adapter-backed health checks in integrations router,Backend Dev + Integrations Eng (STOA-Domain),IFC-099,FILE:apps/api/src/modules/integrations/integrations.router.ts;FILE:packages/adapters/src/index.ts;ENV:Connector credentials configured per provider;ENV:OAuth connector health tokens configured,integrations router health endpoints use adapter checkConnection/getAccessToken instead of Math.random; unknown status is returned when health check credentials are missing; deterministic tests replace flaky retry loops; verified by: pnpm vitest run apps/api/src/modules/integrations/__tests__/integrations.router.test.ts,Completed,0 random health checks in integrations router; deterministic integration router tests; health summary includes unknown status for unconfigured connectors,14,ARTIFACT:apps/api/src/modules/integrations/integrations.router.ts;ARTIFACT:apps/api/src/modules/integrations/__tests__/integrations.router.test.ts,VALIDATE:pnpm vitest run apps/api/src/modules/integrations/__tests__/integrations.router.test.ts;VALIDATE:pnpm --filter api exec eslint src/modules/integrations/integrations.router.ts src/modules/integrations/__tests__/integrations.router.test.ts,30/60/120,2026-03-04,2026-03-04,100,IFC-099:FS,
IFC-214,AI/ML,Redis-backed AI Monitoring State Bridge - Replace process-local singleton reads with shared Redis telemetry store,Backend Dev + AI Specialist (STOA-Intelligence),"IFC-015,IFC-168,IFC-197",FILE:apps/api/src/modules/ai-monitoring/ai-monitoring.router.ts;FILE:apps/ai-worker/src/monitoring/chain-monitor.ts;FILE:apps/ai-worker/src/monitoring/index.ts;FILE:packages/platform/src/queues/queue-factory.ts;FILE:docs/compliance-and-governance/governance/risk-register.md;FILE:docs/architecture/adr/ADR-036-bullmq-task-processing.md;ENV:REDIS_URL configured;ENV:API and ai-worker share Redis,"ai-worker publishes tenant-scoped monitoring snapshots to Redis and aiMonitoring router reads Redis-backed metrics (getStatus/getDriftMetrics/getLatencyMetrics/getHallucinationReport/getROIMetrics) instead of in-process singletons; cache-poisoning mitigations enforced (key namespacing, schema validation, TTL/versioning); Redis outage fallback returns safe empty payloads; cross-process integration test verifies worker writes are visible to API; verified by: pnpm test --filter api;pnpm test --filter ai-worker",Completed,Cross-process metric consistency >=99%; Redis read p95 <50ms; malformed payload acceptance = 0; test coverage >=90%,18,ARTIFACT:apps/api/src/modules/ai-monitoring/ai-monitoring.redis-store.ts;ARTIFACT:apps/api/src/modules/ai-monitoring/ai-monitoring.router.ts;ARTIFACT:tests/integration/ai-monitoring-redis-bridge.test.ts;ARTIFACT:apps/ai-worker/src/monitoring/redis-monitoring-publisher.ts;ARTIFACT:apps/ai-worker/src/monitoring/__tests__/redis-monitoring-publisher.test.ts;SPEC:.specify/sprints/sprint-18/specifications/IFC-214-spec.md;PLAN:.specify/sprints/sprint-18/planning/IFC-214-plan.md;EVIDENCE:.specify/sprints/sprint-18/attestations/IFC-214/context_ack.json,VALIDATE:pnpm test --filter api;VALIDATE:pnpm test --filter ai-worker;AUDIT:security-review;GATE:coverage-gte-90,120/240/480,,,0,"IFC-015:FS,IFC-168:FS,IFC-197:FS",
IFC-215,AI/ML,AI Monitoring Payload Fidelity - Replace tokenCost model and hallucination placeholders with real chain metadata,AI Specialist + Backend Dev (STOA-Intelligence),"IFC-117,IFC-197,IFC-214",FILE:apps/ai-worker/src/monitoring/chain-monitor.ts;FILE:apps/ai-worker/src/chains/scoring.chain.ts;FILE:apps/ai-worker/src/utils/cost-tracker.ts;FILE:apps/ai-worker/src/monitoring/hallucination-checker.ts;FILE:apps/api/src/modules/ai-monitoring/ai-monitoring.router.ts;FILE:docs/architecture/adr/ADR-022-ai-features-quality.md;ENV:LLM token usage callbacks enabled,"chain-monitor records actual model id tokenCost and hallucinationFlags from runtime chain metadata (no hardcoded 'default', 0, [] placeholders); Redis/API metric schema exposes populated fields with null-safe fallback semantics; unit and integration tests cover populated and fallback scenarios; verified by: pnpm test --filter ai-worker;pnpm test --filter api",Completed,Placeholder values in scoring path = 0; metric completeness >=95%; token-cost variance <=1%; test coverage >=90%,18,ARTIFACT:apps/ai-worker/src/monitoring/chain-monitor.ts;ARTIFACT:apps/ai-worker/src/chains/scoring.chain.ts;ARTIFACT:apps/ai-worker/src/utils/cost-tracker.ts;ARTIFACT:apps/ai-worker/src/monitoring/__tests__/chain-monitor.metrics-fidelity.test.ts;ARTIFACT:apps/api/src/modules/ai-monitoring/__tests__/ai-monitoring.router.test.ts;SPEC:.specify/sprints/sprint-18/specifications/IFC-215-spec.md;PLAN:.specify/sprints/sprint-18/planning/IFC-215-plan.md;EVIDENCE:.specify/sprints/sprint-18/attestations/IFC-215/context_ack.json,VALIDATE:pnpm test --filter ai-worker;VALIDATE:pnpm test --filter api;GATE:coverage-gte-90;GATE:no-hardcoded-predictions,60/120/240,2026-06-29,,0,"IFC-117:FS,IFC-197:FS,IFC-214:FS",
A11Y-REVIEW-001,Documentation,Execute first quarterly accessibility documentation review using template,ifc-ui-2,DOC-012,FILE:docs/compliance-and-governance/compliance/quarterly-a11y-review-template.md,All 5 review sections completed with evidence; sign-off block filled; conformance statement updated if needed; review archived at docs/compliance-and-governance/compliance/quarterly-a11y-reviews/sprint-20-review.md; verified by: template completeness review,Backlog,All 5 review sections PASS; all FILL markers completed with evidence; documents updated as needed,31,ARTIFACT:docs/compliance-and-governance/compliance/quarterly-a11y-reviews/sprint-20-review.md,VALIDATE:pnpm lint,20/40/80,2027-02-21,2027-03-06,0,DOC-012:FS,
IFC-216,Core CRM,Entity Detail File Upload/Download Wiring  -  Wire file upload and download handlers on entity detail pages (Lead Contact Deal). Upload: file picker to upload mutation to Supabase Storage. Download: presigned URL to browser download. Follows IFC-094 (Pattern 1  -  infra-only). Resolves WIRE-IFC-094-001.,pg-208,IFC-094,FILE:apps/web/src/app/leads/[id]/page.tsx;FILE:apps/web/src/app/contacts/[id]/page.tsx;FILE:apps/web/src/app/deals/[id]/page.tsx;FILE:apps/web/src/components/documents/DocumentUpload.tsx;ENV:Supabase Storage bucket configured,Upload/download working on 3 entity detail pages; presigned URLs; file size validation; tenant isolation; tests >=90%,Backlog,Upload <2s for <10MB; download URL generation <200ms; test coverage >=90%,47,ARTIFACT:apps/web/src/app/leads/[id]/page.tsx;ARTIFACT:apps/web/src/app/contacts/[id]/page.tsx;ARTIFACT:apps/web/src/app/deals/[id]/page.tsx;EVIDENCE:.specify/sprints/sprint-23/attestations/IFC-216/context_ack.json,VALIDATE:pnpm --filter @intelliflow/web typecheck;VALIDATE:pnpm --filter @intelliflow/web test --run;GATE:coverage-gte-90,60/120/240,2027-10-03,2027-10-16,0,IFC-094:FS,
IFC-217,Core CRM,Entity Detail Email Compose Wiring  -  Wire existing EmailCompose component into Compose buttons on Lead and Contact detail pages. Pre-fill recipient. Open as Sheet overlay. Connect to email send API via EmailServiceAdapter. Follows IFC-144 and PG-141 (Pattern 1 + Pattern 2). Resolves WIRE-IFC-144-001 and WIRE-PG-141-001.,ifc-ui-2,"IFC-144,PG-141",FILE:apps/web/src/components/email/EmailCompose.tsx;FILE:apps/web/src/app/leads/[id]/page.tsx;FILE:apps/web/src/app/contacts/[id]/page.tsx,Compose button opens EmailCompose on Lead + Contact detail; sends via API; success toast; tests >=90%,Backlog,Compose open <300ms; test coverage >=90%,42,ARTIFACT:apps/web/src/app/leads/[id]/page.tsx;ARTIFACT:apps/web/src/app/contacts/[id]/page.tsx;EVIDENCE:.specify/sprints/sprint-22/attestations/IFC-217/context_ack.json,VALIDATE:pnpm --filter @intelliflow/web typecheck;VALIDATE:pnpm --filter @intelliflow/web test --run;GATE:coverage-gte-90,60/120/240,2027-07-25,2027-08-07,0,"IFC-144:FS,PG-141:FS",
IFC-218,AI Foundation,Similar Entity API (pgvector)  -  Build lead.getSimilar and contact.getSimilar tRPC queries using pgvector embedding similarity. Top 5 matches exclude self tenant-isolated. Wire to Lead detail sidebar (replace empty state) and Contact detail sidebar. Follows IFC-039 (Pattern 1  -  infra-only). Resolves WIRE-IFC-039-001.,pg-208,IFC-039,FILE:apps/api/src/modules/lead/lead.router.ts;FILE:apps/api/src/modules/contact/contact.router.ts;FILE:packages/db/prisma/schema.prisma;ENV:pgvector extension enabled,getSimilar returns top 5 with name/company/score; wired to 2 detail sidebars; tenant-isolated; tests >=90%,Backlog,Query <500ms; top match relevance >0.7; test coverage >=90%,27,ARTIFACT:apps/api/src/modules/lead/lead.router.ts;ARTIFACT:apps/api/src/modules/contact/contact.router.ts;ARTIFACT:apps/web/src/app/leads/[id]/page.tsx;EVIDENCE:.specify/sprints/sprint-20/attestations/IFC-218/context_ack.json,VALIDATE:pnpm --filter api typecheck;VALIDATE:pnpm --filter api test --run;GATE:coverage-gte-90,90/180/360,2026-12-27,2027-01-09,0,IFC-039:FS,
IFC-219,Core CRM,Activity Feed Interactions (Reactions + Comments)  -  Add ActivityReaction and ActivityComment models to Prisma schema. tRPC mutations: addReaction removeReaction addComment. Wire into Lead and Contact detail activity action buttons. Remove hardcoded [] arrays. Follows IFC-069 (Pattern 2  -  scope oversight). Resolves WIRE-IFC-069-001.,pg-208,IFC-069,FILE:packages/db/prisma/schema.prisma;FILE:apps/api/src/modules/misc/timeline.router.ts;FILE:apps/web/src/app/leads/[id]/page.tsx;FILE:apps/web/src/app/contacts/[id]/page.tsx,Reactions + comments persisted; action buttons functional on Lead + Contact; Prisma migration; real-time via WS; tests >=90%,Backlog,Reaction add <100ms; comment add <200ms; test coverage >=90%,27,ARTIFACT:packages/db/prisma/schema.prisma;ARTIFACT:apps/api/src/modules/misc/timeline.router.ts;EVIDENCE:.specify/sprints/sprint-20/attestations/IFC-219/context_ack.json,VALIDATE:pnpm --filter api typecheck;VALIDATE:pnpm --filter api test --run;GATE:coverage-gte-90,90/180/360,2026-12-27,2027-01-09,0,IFC-069:FS,
IFC-220,AI Foundation,AI Insight Null-State UX (Contact)  -  Add Run AI Analysis button when aiInsight is null on Contact detail page. Lead detail already done 2026-03-04. Pattern: amber dashed-border banner + button wired to scoreWithAI mutation. Invalidate query on success. Follows IFC-095 (Pattern 2  -  scope oversight). Resolves WIRE-IFC-095-001.,Frontend Dev (STOA-Quality),IFC-095,FILE:apps/web/src/app/contacts/[id]/page.tsx;FILE:apps/web/src/app/leads/[id]/page.tsx,Contact detail shows Run AI Analysis when no insight; triggers mutation; refreshes; matches Lead pattern; tests >=90%,Completed,Mutation completes <3s; test coverage >=90%,16,ARTIFACT:apps/web/src/app/contacts/[id]/page.tsx;EVIDENCE:.specify/sprints/sprint-16/attestations/IFC-220/attestation.json,VALIDATE:pnpm --filter @intelliflow/web typecheck;VALIDATE:pnpm --filter @intelliflow/web test --run;GATE:coverage-gte-90,30/60/120,2026-03-12,2026-03-12,100,IFC-095:FS,
IFC-221,Core CRM,Email Open Tracking Integration  -  Real email open/click tracking. Backend: tracking pixel endpoint recording opens; click-through URL wrapper; EmailTracking model. Frontend: replace activity-derived open rate with real data on Lead and Contact detail. Inject pixel + wrap links on outbound send. Follows IFC-144 and IFC-099 (Pattern 1  -  infra-only). Resolves WIRE-IFC-099-001. Broadened 2026-10-21 (PG-207): the pixel and link wrapping apply to mail sent through every user mailbox kind (SMTP/Gmail/Microsoft via dispatchUserMail; ADR-085) and honour the PG-207 Email Settings trackOpens/trackClicks toggles (category 2 until this ships).,ifc-074,"IFC-144,IFC-099",FILE:apps/api/src/modules/email/inbound.router.ts;FILE:packages/db/prisma/schema.prisma;FILE:apps/web/src/app/leads/[id]/page.tsx;FILE:apps/web/src/app/contacts/[id]/page.tsx,Tracking pixel injected; opens recorded; click-through tracked; real open rate on entity detail; privacy-compliant; tests >=90%,Backlog,Pixel response <50ms; tracking accuracy >95%; test coverage >=90%,43,ARTIFACT:apps/api/src/modules/email/tracking.router.ts;ARTIFACT:packages/db/prisma/schema.prisma;EVIDENCE:.specify/sprints/sprint-22/attestations/IFC-221/context_ack.json,VALIDATE:pnpm --filter api typecheck;VALIDATE:pnpm --filter api test --run;GATE:coverage-gte-90,60/120/240,2027-08-08,2027-08-21,0,"IFC-144:FS,IFC-099:FS",
IFC-222,Notifications,"Implement real Twilio SMS SDK calls (Resolves R-006) REOPENED 16/11/2026 (self-claimed done, DoD partly met): DoD 'real Twilio SDK calls replace mock logic': the notification path does not call the Twilio client (SMS returns 'not configured').",pg-208,IFC-170,,Real Twilio SDK calls replace mock logic; verified by: pnpm test,Backlog,SMS delivery uses real Twilio API,45,EVIDENCE:.specify/sprints/sprint-14/attestations/IFC-222/context_ack.json;SPEC:.specify/sprints/sprint-14/specifications/IFC-222-spec.md;PLAN:.specify/sprints/sprint-14/planning/IFC-222-plan.md;ATTESTATION:.specify/sprints/sprint-14/attestations/IFC-222/attestation.json,VALIDATE:pnpm test,60/120/240,2027-09-05,2027-09-18,50,IFC-170:FS,
IFC-223,Notifications,Wire actual Email Outbound Adapter (Resolves R-018) [2026-06-09 audit: shipped as Completed but was MOCK in prod — container.ts had no resend branch; actually wired to Resend via #363/#360 + activated on Railway api service],Backend Dev (STOA-Domain),IFC-157,FILE:packages/adapters/src/messaging/email/outbound.ts,Email outbound connects to real SMTP/API provider; verified by: pnpm test,Completed,Emails dispatch to external provider,14,ARTIFACT:packages/adapters/src/messaging/email/outbound.ts;EVIDENCE:.specify/sprints/sprint-14/attestations/IFC-223/context_ack.json;SPEC:.specify/sprints/sprint-14/specifications/IFC-223-spec.md;PLAN:.specify/sprints/sprint-14/planning/IFC-223-plan.md;ATTESTATION:.specify/sprints/sprint-14/attestations/IFC-223/attestation.json,VALIDATE:pnpm test,60/120/240,2026-03-06,2026-03-07,100,IFC-157:FS,
